# Datalogger for IoT

Schedule from GanttProject, 2022-09-22 to 2023-01-27.
ETSIT UVA
El proyecto consiste en el diseño, fabricación, programación y verificación de un Datalogger for IoT

## Calendars

- Project calendar: Mon-Sun working.

## Resources

| Resource |
| --- |
| Óscar Martín |
| Rubén Serrano |
| Pablo Villacorta |
| Andrés Martín |

## Schedule

| ID | WBS | Task | Duration | Start | Finish | Predecessors | Resources |
| --- | --- | --- | --- | --- | --- | --- | --- |
| 1 | 1 | **Especificación del proyecto** | 7d | 2022-09-22 | 2022-09-28 |  | Óscar Martín [25%]; Rubén Serrano [25%]; Pablo Villacorta [25%]; Andrés Martín [25%] |
| 2 | 1.1 | Estudio sistema | 3d | 2022-09-22 | 2022-09-24 |  |  |
| 3 | 1.2 | Definición de objetivos | 7d | 2022-09-22 | 2022-09-28 |  |  |
| 4 | 2 | **Diseño electrónico y captura esquemática** | 25d | 2022-09-29 | 2022-10-23 | 1 |  |
| 5 | 2.1 | Búsqueda de componentes PCB0 | 4d | 2022-09-29 | 2022-10-02 | 3 | Óscar Martín [50%]; Rubén Serrano [50%] |
| 6 | 2.2 | Búsqueda de componentes PCB1 | 4d | 2022-09-29 | 2022-10-02 | 3 | Óscar Martín [50%]; Rubén Serrano [50%] |
| 7 | 2.3 | Búsqueda de componentes PCB2 | 4d | 2022-09-29 | 2022-10-02 | 3 | Óscar Martín [50%]; Rubén Serrano [50%] |
| 8 | 2.4 | Búsqueda de componentes PCB3 | 4d | 2022-09-29 | 2022-10-02 | 3 | Óscar Martín [50%]; Rubén Serrano [50%] |
| 9 | 2.5 | Creación de nuevos componentes PB0 | 7d | 2022-10-03 | 2022-10-09 | 5, 6, 7, 8 |  |
| 10 | 2.6 | Creación de nuevos componentes PCB1 | 7d | 2022-10-03 | 2022-10-09 | 5, 6, 7, 8 |  |
| 11 | 2.7 | Creación de nuevos componentes PCB 2 | 7d | 2022-10-03 | 2022-10-09 | 5, 6, 7, 8 |  |
| 12 | 2.8 | Creación de nuevos componentes PCB3 | 7d | 2022-10-03 | 2022-10-09 | 5, 8 |  |
| 13 | 2.9 | Posicionamiento de componentes PCB0 | 16d | 2022-10-03 | 2022-10-18 | 5, 6, 7, 8 |  |
| 14 | 2.10 | Posicionamiento de componentes PCB1 | 16d | 2022-10-03 | 2022-10-18 | 5, 6, 7, 8 |  |
| 15 | 2.11 | Posicionamiento de componentes PCB2 | 16d | 2022-10-03 | 2022-10-18 | 5, 6, 7, 8 |  |
| 16 | 2.12 | Posicionamiento de componentes PCB3 | 16d | 2022-10-03 | 2022-10-18 | 5, 6, 7, 8 |  |
| 17 | 2.13 | Análisis consumo eléctrico PCB0 | 9d | 2022-10-03 | 2022-10-11 | 5, 6, 7, 8 | Óscar Martín [90%]; Rubén Serrano; Pablo Villacorta; Andrés Martín |
| 18 | 2.14 | Análisis consumo eléctrico PCB1 | 9d | 2022-10-03 | 2022-10-11 | 5, 6, 7, 8 | Óscar Martín [90%]; Rubén Serrano; Pablo Villacorta; Andrés Martín |
| 19 | 2.15 | Análisis consumo eléctrico PCB2 | 9d | 2022-10-03 | 2022-10-11 | 5, 6, 7, 8 | Óscar Martín [90%]; Rubén Serrano; Pablo Villacorta; Andrés Martín |
| 20 | 2.16 | Análisis consumo eléctrico PCB3 | 9d | 2022-10-03 | 2022-10-11 | 5, 6, 7, 8 | Óscar Martín [90%]; Rubén Serrano; Pablo Villacorta; Andrés Martín |
| 21 | 2.17 | Análisis disipación de potencia | 7d | 2022-10-12 | 2022-10-18 | 17, 18, 19, 20 |  |
| 22 | 2.18 | Rutado de conexiones | 5d | 2022-10-19 | 2022-10-23 | 13, 14, 15, 16, 21 |  |
| 23 | 2.19 | Generación de listado de materiales (BOM) | 21d | 2022-10-03 | 2022-10-23 | 5, 6, 7, 8 |  |
| 24 | 2.20 | Documentación esquemático. Control de cambios | 25d | 2022-09-29 | 2022-10-23 |  |  |

| ID | WBS | Task | Duration | Start | Finish | Predecessors |
| --- | --- | --- | --- | --- | --- | --- |
| 25 | 3 | **Diseño de la placa de circuito integrado** | 21d | 2022-10-24 | 2022-11-13 | 4 |
| 26 | 3.1 | Creación de huellas de nuevos componentes | 11d | 2022-10-24 | 2022-11-03 |  |
| 27 | 3.2 | Posicionado de componentes | 14d | 2022-10-24 | 2022-11-06 |  |
| 28 | 3.3 | Definición de borde y zonas de conectores | 3d | 2022-11-07 | 2022-11-09 | 27 |
| 29 | 3.4 | Planos de disipación térmica | 2d | 2022-11-10 | 2022-11-11 | 28 |
| 30 | 3.5 | Planos de masa y otros | 2d | 2022-11-10 | 2022-11-11 | 28 |
| 31 | 3.6 | Documentación: acotaciones geométricas | 2d | 2022-11-10 | 2022-11-11 | 28 |
| 32 | 3.7 | Rutado de conexiones | 5d | 2022-11-07 | 2022-11-11 | 27 |
| 33 | 3.8 | Documentación: serigrafía. Control de cambios | 19d | 2022-10-24 | 2022-11-11 |  |
| 34 | 3.9 | Generación de ficheros para el fabricante (gerber) | 2d | 2022-11-12 | 2022-11-13 | 29, 30, 31, 32, 33 |
| 35 | 4 | **Fabricación de la placa de circuito impreso** | 25d | 2022-11-14 | 2022-12-08 | 25 |
| 36 | 4.1 | Envío al fabricante | 14d | 2022-11-14 | 2022-11-27 |  |
| 37 | 4.2 | Recepción y revisión | 2d | 2022-11-28 | 2022-11-29 | 36 |
| 38 | 4.3 | Montaje de componentes | 9d | 2022-11-30 | 2022-12-08 | 37 |
| 39 | 5 | **Realización Firmware. Simulación y depuración** | 40d | 2022-11-14 | 2022-12-23 | 25 |
| 40 | 5.1 | Control de elementos hardware: drivers | 33d | 2022-11-14 | 2022-12-16 |  |
| 41 | 5.2 | Verificación | 33d | 2022-11-14 | 2022-12-16 |  |
| 42 | 5.3 | Programa principal. Especificaciones | 7d | 2022-12-17 | 2022-12-23 | 41 |
| 43 | 5.4 | Documentación firmware. Control de cambios | 40d | 2022-11-14 | 2022-12-23 |  |
| 44 | 6 | **Verificación hardware** | 19d | 2023-01-09 | 2023-01-27 |  |
| 45 | 6.1 | Verificación inicial | 1d | 2023-01-09 | 2023-01-09 |  |
| 46 | 6.2 | Verificación firmware | 10d | 2023-01-10 | 2023-01-19 | 45 |
| 47 | 6.3 | Resolución de problemas | 10d | 2023-01-10 | 2023-01-19 | 45 |
| 48 | 6.4 | Análisis de prestaciones | 11d | 2023-01-10 | 2023-01-20 | 45 |
| 49 | 6.5 | Montaje final. Piezas mecánicas | 7d | 2023-01-21 | 2023-01-27 | 48 |

| ID | WBS | Task | Duration | Start | Finish |
| --- | --- | --- | --- | --- | --- |
| 50 | 7 | **Documentación** | 127d | 2022-09-23 | 2023-01-27 |
| 51 | 7.1 | Realización informe | 127d | 2022-09-23 | 2023-01-27 |
